# Obra Exemplo — Cronograma replanejado

How a schedule from MS Project XML changed from version to version. A marks actual dates.

## Version 1 (saved 2026-11-15)

Note of the change: feat(planejamento): leitores de cronograma (MS Project XML e modelo Excel) + arquivos de teste

| ID | WBS | Task | Duration | Start | Finish | Predecessors | Complete |
| --- | --- | --- | --- | --- | --- | --- | --- |
| 1 | 01 | **SERVIÇOS INICIAIS** | 91d | 2026-07-27 | 2026-11-30 |  | 71% |
| 2 | 01.01 | **Serviços Técnicos** | 86d | 2026-08-01 | 2026-11-30 |  | 85% |
| 3 |  | Fiscalização/Acompanhamento/Gerenciamento - ART | 86d | 2026-08-01 | 2026-11-30 |  | 85% |
| 4 | 01.02 | **Serviços Preliminares** | 5d | 2026-08-01 | 2026-08-07 |  |  |
| 5 |  | Cópias e Plotagens | 5d | 2026-08-01 | 2026-08-07 |  |  |
| 6 |  | Seguros | 1d | 2026-08-01 | 2026-08-01 |  |  |
| 7 | 01.03 | **Instalações Provisórias** | 20d | 2026-08-01 | 2026-08-28 |  |  |
| 8 | 01.03.01 | **Tapumes/Cercas** | 5d | 2026-08-24 | 2026-08-28 |  |  |
| 9 |  | Execução de pilaretes para tapumes e construções temporárias | 2d | 2026-08-24 | 2026-08-25 |  |  |
| 10 |  | tapume com telha metalica | 5d | 2026-08-24 | 2026-08-28 |  |  |
| 11 |  | Canteiro de Obras Depósitos/Escritórios/Proteção Transeuntes | 1d | 2026-08-01 | 2026-08-03 |  |  |
| 12 | 01.03.03 | **Placa de Obra** | 1d | 2026-08-01 | 2026-08-03 |  |  |
| 13 |  | Placa de sinalizacao de seguranca contra incendio | 1d | 2026-08-01 | 2026-08-03 |  |  |
| 14 |  | Placa de sinalizacao em chapa de aluminio com pintura refletiva | 1d | 2026-08-01 | 2026-08-03 |  |  |
| 15 |  | Ligação Provisória de Água | 1d | 2026-08-01 | 2026-08-03 |  |  |
| 16 |  | Ligação Provisória de Energia | 1d | 2026-08-01 | 2026-08-03 |  |  |
| 17 |  | Mobilização do canteiro | 5d | 2026-07-27 | 2026-07-31 |  | 100% |
| 18 |  | Aprovação do projeto na prefeitura | 0d | 2026-07-31 | 2026-07-31 | 17 |  |
| 19 | 02 | **ADMINISTRAÇÃO DA OBRA E DESPESAS GERAIS** | 8d | 2026-08-01 | 2026-08-12 |  |  |
| 20 | 02.01 | **Administração da Obra e Despesas Gerais** | 8d | 2026-08-01 | 2026-08-12 |  |  |
| 21 |  | Consumos Combustíveis e Lubrificantes | 8d | 2026-08-01 | 2026-08-12 |  |  |
| 22 |  | Consumos de Água e Luz | 2d | 2026-08-01 | 2026-08-04 |  |  |
| 23 |  | EPI/EPC | 1d | 2026-08-01 | 2026-08-03 |  |  |
| 24 |  | PCMAT/PCMSO | 1d | 2026-08-01 | 2026-08-03 |  |  |
| 25 | 03 | **TRABALHOS EM TERRA** | 16d | 2026-08-01 | 2026-08-24 |  | 11% |
| 26 | 03.01 | **Trabalhos em Terra** | 16d | 2026-08-01 | 2026-08-24 |  | 11% |
| 27 |  | Terraplanagem nível +1,19 | 2d | 2026-08-01 | 2026-08-04 | 17 | 100% |
| 28 |  | Compactação de Solo | 2d | 2026-08-04 | 2026-08-05 | 27 |  |
| 29 |  | Bota-Fora (Transporte De Material Excedente) | 14d | 2026-08-05 | 2026-08-24 | 28 |  |
| 30 | 04 | **FUNDAÇÕES** | 86d | 2026-08-05 | 2026-12-02 |  | 5% |
| 31 | 04.01 | **LOCAÇÃO** | 5d | 2026-08-28 | 2026-09-03 |  |  |
| 32 |  | Locação da Obra (Gabarito) | 5d | 2026-08-28 | 2026-09-03 |  |  |
| 33 | 04.02 | **Estaca Hélice Contínua** | 10d | 2026-09-04 | 2026-09-17 |  |  |
| 34 |  | Estaca Hélice Contínua - 6 x C25 - 10m | 2d | 2026-09-04 | 2026-09-07 | 32FS+1d |  |
| 35 |  | Estaca Hélice Contínua - 69 x C30 - 10m | 3d | 2026-09-10 | 2026-09-14 | 34 |  |
| 36 |  | Estaca Hélice Contínua - 9 x C30 - 6m | 4d | 2026-09-14 | 2026-09-17 | 35 |  |
| 37 | 04.03 | **arrasamentos de estacas** | 10d | 2026-09-12 | 2026-09-27 |  |  |
| 38 |  | Arrasamento Mecânico de Estacas | 10d | 2026-09-12 | 2026-09-27 | 36 |  |
| 39 | 04.04 | **BLOCO DE CORoAMENTO e viga baldrame** | 86d | 2026-08-05 | 2026-12-02 |  |  |
| 40 |  | Lastro de Concreto Magro | 7d | 2026-11-18 | 2026-11-26 | 46 |  |
| 41 |  | Escavação Mecanizada | 2d | 2026-09-29 | 2026-09-30 | 38 |  |
| 42 | 04.04.03 | **Formas** | 46d | 2026-09-30 | 2026-12-02 |  |  |
| 43 |  | Fabricação | 9d | 2026-09-30 | 2026-10-12 | 41 |  |
| 44 |  | Fabricação | 9d | 2026-10-12 | 2026-10-22 | 43 |  |
| 45 |  | Fabricação | 8d | 2026-10-22 | 2026-11-02 | 44 |  |
| 46 |  | Fabricação | 13d | 2026-11-02 | 2026-11-18 | 45 |  |
| 47 |  | Fabricação | 11d | 2026-11-18 | 2026-12-02 | 46 |  |
| 48 |  | Concretagem | 2d | 2026-08-05 | 2026-08-06 |  |  |
| 49 | 04.04.05 | **Armação** | 5d | 2026-08-05 | 2026-08-11 |  |  |
| 50 |  | Armação de estruturas diversas de concreto armado | 5d | 2026-08-05 | 2026-08-11 |  |  |
| 51 |  | Armação de estruturas diversas de concreto armado | 4d | 2026-08-05 | 2026-08-10 |  |  |
| 52 | 04.05 | **CONTENÇÃO VIZINHO** | 14d | 2026-08-06 | 2026-08-25 |  | 40% |
| 53 |  | Escoramentos de Terrenos de Vizinhos | 14d | 2026-08-06 | 2026-08-25 | 48 | 40% |
| 54 | 04.06 | **PROVAS DE CARGA EM ESTACAS** | 9d | 2026-09-04 | 2026-09-16 |  |  |
| 55 |  | Provas de Cargas em Estacas | 9d | 2026-09-04 | 2026-09-16 | 34SS |  |
| 56 | 04.07 | **impermeabilizações** | 4d | 2026-08-25 | 2026-08-28 |  |  |
| 57 |  | Impermeabilização de Baldrames com Manta Asfáltica | 3d | 2026-08-25 | 2026-08-27 | 53 |  |
| 58 |  | Impermeabilização de Muro com Manta Asfáltica | 2d | 2026-08-27 | 2026-08-28 | 57 |  |

## Version 2 (saved 2026-11-15)

Note of the change: feat(planejamento): importar cronograma — criar planejamento a partir de MS Project XML ou Excel (#469)

Last finish stays 2026-12-02.

Changed:

| ID | Task | Start | Finish | Duration | Complete |
| --- | --- | --- | --- | --- | --- |
| 1 | **SERVIÇOS INICIAIS** | 2026-07-27 → 2026-07-24 (-3d) | 2026-11-30 → 2026-12-02 (+2d) | 91d → 94d | 71% → 72% |
| 2 | **Serviços Técnicos** | 2026-08-01 → 2026-08-05 (+4d) | 2026-11-30 → 2026-12-02 (+2d) |  |  |
| 3 | Fiscalização/Acompanhamento/Gerenciamento - ART | 2026-08-01 → 2026-08-05 (+4d) | 2026-11-30 → 2026-12-02 (+2d) |  |  |
| 4 | **Serviços Preliminares** |  | 2026-08-07 → 2026-08-06 (-1d) | 5d → 4d |  |
| 5 | Cópias e Plotagens |  | 2026-08-07 → 2026-08-06 (-1d) |  |  |
| 6 | Seguros |  |  | 1d → 0d |  |
| 7 | **Instalações Provisórias** |  | 2026-08-28 → 2026-08-27 (-1d) | 20d → 19d |  |
| 8 | **Tapumes/Cercas** |  | 2026-08-28 → 2026-08-27 (-1d) | 5d → 4d |  |
| 9 | Execução de pilaretes para tapumes e construções temporárias |  | 2026-08-25 → 2026-08-24 (-1d) | 2d → 1d |  |
| 10 | tapume com telha metalica |  | 2026-08-28 → 2026-08-27 (-1d) | 5d → 4d |  |
| 11 | Canteiro de Obras Depósitos/Escritórios/Proteção Transeuntes |  | 2026-08-03 → 2026-08-01 (-2d) |  |  |
| 12 | **Placa de Obra** |  | 2026-08-03 → 2026-08-01 (-2d) |  |  |
| 13 | Placa de sinalizacao de seguranca contra incendio |  | 2026-08-03 → 2026-08-01 (-2d) |  |  |
| 14 | Placa de sinalizacao em chapa de aluminio com pintura refletiva |  | 2026-08-03 → 2026-08-01 (-2d) |  |  |
| 15 | Ligação Provisória de Água |  | 2026-08-03 → 2026-08-01 (-2d) |  |  |
| 16 | Ligação Provisória de Energia |  | 2026-08-03 → 2026-08-01 (-2d) |  |  |
| 17 | Mobilização do canteiro | 2026-07-27 → 2026-07-24 (-3d) | 2026-07-31 → 2026-07-30 (-1d) |  |  |
| 19 | **ADMINISTRAÇÃO DA OBRA E DESPESAS GERAIS** |  | 2026-08-12 → 2026-08-14 (+2d) | 8d → 10d |  |
| 20 | **Administração da Obra e Despesas Gerais** |  | 2026-08-12 → 2026-08-14 (+2d) | 8d → 10d |  |
| 21 | Consumos Combustíveis e Lubrificantes | 2026-08-01 → 2026-08-05 (+4d) | 2026-08-12 → 2026-08-14 (+2d) |  |  |
| 22 | Consumos de Água e Luz |  | 2026-08-04 → 2026-08-03 (-1d) |  |  |
| 23 | EPI/EPC |  | 2026-08-03 → 2026-08-01 (-2d) |  |  |
| 24 | PCMAT/PCMSO |  | 2026-08-03 → 2026-08-01 (-2d) |  |  |
| 25 | **TRABALHOS EM TERRA** |  | 2026-08-24 → 2026-08-21 (-3d) | 16d → 15d | 11% → 13% |
| 26 | **Trabalhos em Terra** |  | 2026-08-24 → 2026-08-21 (-3d) | 16d → 15d | 11% → 13% |
| 27 | Terraplanagem nível +1,19 |  | 2026-08-04 → 2026-08-03 (-1d) |  |  |
| 28 | Compactação de Solo |  | 2026-08-05 → 2026-08-04 (-1d) | 2d → 1d |  |
| 29 | Bota-Fora (Transporte De Material Excedente) |  | 2026-08-24 → 2026-08-21 (-3d) | 14d → 13d |  |
| 30 | **FUNDAÇÕES** |  | 2026-12-02 → 2026-12-01 (-1d) | 86d → 85d |  |
| 31 | **LOCAÇÃO** |  | 2026-09-03 → 2026-09-02 (-1d) | 5d → 4d |  |
| 32 | Locação da Obra (Gabarito) |  | 2026-09-03 → 2026-09-02 (-1d) | 5d → 4d |  |
| 33 | **Estaca Hélice Contínua** |  | 2026-09-17 → 2026-09-11 (-6d) | 10d → 6d |  |
| 34 | Estaca Hélice Contínua - 6 x C25 - 10m |  | 2026-09-07 → 2026-09-04 (-3d) | 2d → 1d |  |
| 35 | Estaca Hélice Contínua - 69 x C30 - 10m | 2026-09-10 → 2026-09-07 (-3d) | 2026-09-14 → 2026-09-10 (-4d) | 3d → 4d |  |
| 36 | Estaca Hélice Contínua - 9 x C30 - 6m | 2026-09-14 → 2026-09-11 (-3d) | 2026-09-17 → 2026-09-11 (-6d) | 4d → 1d |  |
| 37 | **arrasamentos de estacas** | 2026-09-12 → 2026-09-14 (+2d) | 2026-09-27 → 2026-09-28 (+1d) | 10d → 11d |  |
| 38 | Arrasamento Mecânico de Estacas | 2026-09-12 → 2026-09-14 (+2d) | 2026-09-27 → 2026-09-28 (+1d) | 10d → 11d |  |
| 39 | **BLOCO DE CORoAMENTO e viga baldrame** |  | 2026-12-02 → 2026-12-01 (-1d) | 86d → 85d |  |
| 40 | Lastro de Concreto Magro |  | 2026-11-26 → 2026-11-25 (-1d) | 7d → 6d |  |
| 41 | Escavação Mecanizada |  | 2026-09-30 → 2026-09-29 (-1d) | 2d → 1d |  |
| 42 | **Formas** |  | 2026-12-02 → 2026-12-01 (-1d) | 46d → 45d |  |
| 43 | Fabricação |  | 2026-10-12 → 2026-10-09 (-3d) | 9d → 8d |  |
| 44 | Fabricação |  | 2026-10-22 → 2026-10-21 (-1d) | 9d → 8d |  |
| 45 | Fabricação |  | 2026-11-02 → 2026-10-30 (-3d) | 8d → 7d |  |
| 46 | Fabricação |  | 2026-11-18 → 2026-11-17 (-1d) | 13d → 12d |  |
| 47 | Fabricação |  | 2026-12-02 → 2026-12-01 (-1d) | 11d → 10d |  |
| 48 | Concretagem |  | 2026-08-06 → 2026-08-05 (-1d) | 2d → 1d |  |
| 49 | **Armação** |  | 2026-08-11 → 2026-08-10 (-1d) | 5d → 4d |  |
| 50 | Armação de estruturas diversas de concreto armado |  | 2026-08-11 → 2026-08-10 (-1d) | 5d → 4d |  |
| 51 | Armação de estruturas diversas de concreto armado |  | 2026-08-10 → 2026-08-07 (-3d) | 4d → 3d |  |
| 52 | **CONTENÇÃO VIZINHO** |  | 2026-08-25 → 2026-08-24 (-1d) | 14d → 13d |  |
| 53 | Escoramentos de Terrenos de Vizinhos |  | 2026-08-25 → 2026-08-24 (-1d) | 14d → 13d |  |
| 54 | **PROVAS DE CARGA EM ESTACAS** |  | 2026-09-16 → 2026-09-15 (-1d) | 9d → 8d |  |
| 55 | Provas de Cargas em Estacas |  | 2026-09-16 → 2026-09-15 (-1d) | 9d → 8d |  |
| 56 | **impermeabilizações** |  | 2026-08-28 → 2026-09-01 (+4d) | 4d → 6d |  |
| 57 | Impermeabilização de Baldrames com Manta Asfáltica |  | 2026-08-27 → 2026-08-26 (-1d) | 3d → 2d |  |
| 58 | Impermeabilização de Muro com Manta Asfáltica | 2026-08-27 → 2026-09-01 (+5d) | 2026-08-28 → 2026-09-01 (+4d) | 2d → 1d |  |
